# SSWE_AUTO_LEVEL_RESSOURCES

Schedule from MS Project, 2013-03-11 to 2013-05-23, 7 hours a day.

## Calendars

- Cr�neaux PI: Mon-Sun off. Exceptions (off unless hours are given): 2013-03-11 to 2013-03-12 09:00-12:30, 14:00-17:30 (Day), 2013-03-14 to 2013-03-15 09:00-12:30 (Day), 2013-03-18 to 2013-03-19 09:00-12:30 (Day), 2013-03-20 to 2013-03-21 09:00-12:30, 14:00-17:30 (Day), 2013-03-27 to 2013-03-28 14:00-17:30 (Day), 2013-04-04 to 2013-04-05 09:00-12:30 (Day), 2013-04-08 to 2013-04-11 14:00-17:30 (Day), 2013-04-12 to 2013-04-13 09:00-12:30 (Day), 2013-04-15 to 2013-04-16 14:00-17:30 (Day), 2013-04-18 to 2013-04-19 09:00-12:30 (Day), 2013-04-22 to 2013-04-23 09:00-12:30, 14:00-17:30 (Day), 2013-04-24 to 2013-04-25 14:00-17:30 (Day), 2013-04-26 to 2013-04-27 09:00-12:30 (Day), 2013-04-29 to 2013-04-30 09:00-12:30, 14:00-17:30 (Day), 2013-05-03 to 2013-05-04 09:00-12:30, 14:00-17:30 (Day), 2013-05-06 to 2013-05-07 09:00-12:30, 14:00-17:30 (Day), 2013-05-13 to 2013-05-16 09:00-12:30, 14:00-17:30 (Day), 2013-05-21 to 2013-05-22 09:00-12:30, 14:00-17:30 (Day), 2013-05-23 to 2013-05-24 09:00-12:30 (Day).

## Resources

| Resource |
| --- |
| Julien Moreau-Mathis |
| Arthur Caron |
| Etienne Rocipon |

## Schedule

| ID | WBS | Task | Duration | Start | Finish | Predecessors | Total slack | Free slack | Resources | Work |
| --- | --- | --- | --- | --- | --- | --- | --- | --- | --- | --- |
| 1 | 1 | **Specifications** | 17.86d | 2013-03-12 | 2013-04-30 |  | 0d |  |  | 48h |
| 2 | 1.1 | **Normalize to C 11** | 2.14d | 2013-03-12 | 2013-03-18 | 22 | 0d |  |  | 8h |
| 3 | 1.1.1 | Write Specifications | 1.14d | 2013-03-12 | 2013-03-14 |  | 0d |  | Julien Moreau-Mathis | 8h |
| 4 | 1.1.2 | Validate Specifications | 1d | 2013-03-14 | 2013-03-18 | 3 | 0d |  |  |  |
| 5 | 1.2 | **User-SSWE Interactions** | 2.14d | 2013-04-10 | 2013-04-15 | 21 | 2d | 0d |  | 8h |
| 6 | 1.2.1 | Write Specifications | 1.14d | 2013-04-10 | 2013-04-12 |  | 2d | 0d | Arthur Caron | 8h |
| 7 | 1.2.2 | Validate Specifications | 1d | 2013-04-12 | 2013-04-15 | 6 | 2d |  |  |  |
| 8 | 1.3 | **Graphics Core** | 13.43d | 2013-03-21 | 2013-04-30 |  | 0d |  |  | 32h |
| 9 | 1.3.1 | **Water surfaces** | 2.14d | 2013-04-10 | 2013-04-15 | 21 | 11.43d | 0d |  | 8h |
| 10 | 1.3.1.1 | Write Specifications | 1.14d | 2013-04-10 | 2013-04-12 |  | 11.43d | 0d | Etienne Rocipon | 8h |
| 11 | 1.3.1.2 | Validate Specifications | 1d | 2013-04-12 | 2013-04-15 | 10 | 11.43d |  |  |  |
| 12 | 1.3.2 | **Volume Lights** | 2.14d | 2013-04-18 | 2013-04-23 | 29 | 2d |  |  | 8h |
| 13 | 1.3.2.1 | Write Specifications | 1.14d | 2013-04-18 | 2013-04-22 | 21 | 2d | 0d | Arthur Caron | 8h |
| 14 | 1.3.2.2 | Validate Specifications | 1d | 2013-04-22 | 2013-04-23 | 13 | 2d | 0d |  |  |
| 15 | 1.3.3 | **Rendering Features** | 2.14d | 2013-03-21 | 2013-04-05 | 26 | 0d |  |  | 8h |
| 16 | 1.3.3.1 | Write Specifications | 1.14d | 2013-03-21 | 2013-03-28 |  | 0d |  | Julien Moreau-Mathis | 8h |
| 17 | 1.3.3.2 | Validate Specifications | 1d | 2013-03-28 | 2013-04-05 | 16 | 0d |  |  |  |
| 18 | 1.3.4 | **Animators** | 2.14d | 2013-04-27 | 2013-04-30 |  | 2d | 0d |  | 8h |
| 19 | 1.3.4.1 | Write Specifications | 1.14d | 2013-04-27 | 2013-04-29 | 35 | 2d | 0d | Arthur Caron | 8h |
| 20 | 1.3.4.2 | Validate Specifications | 1d | 2013-04-30 | 2013-04-30 | 19 | 2d |  |  |  |
| 21 | 2 | **Formations** | 9.14d | 2013-03-11 | 2013-04-10 |  | 0d |  |  | 56h |
| 22 | 2.1 | Learn C 11 | 1.14d | 2013-03-11 | 2013-03-12 |  | 0d |  | Julien Moreau-Mathis; Arthur Caron; Etienne Rocipon | 24h |
| 23 | 2.2 | Learn Irrlicht | 4d | 2013-03-12 | 2013-03-21 | 22 | 2d | 0d | Arthur Caron; Etienne Rocipon | 16h |
| 24 | 2.3 | Learn existed code | 4d | 2013-03-21 | 2013-04-10 | 23 | 2d |  | Arthur Caron; Etienne Rocipon | 16h |

| ID | WBS | Task | Duration | Start | Finish | Predecessors | Total slack | Free slack | Resources | Work |
| --- | --- | --- | --- | --- | --- | --- | --- | --- | --- | --- |
| 25 | 3 | **Development** | 21.71d | 2013-03-18 | 2013-05-14 |  | 0d |  |  | 104h |
| 26 | 3.1 | **Normalize to C 11** | 2.29d | 2013-03-18 | 2013-03-21 | 2, 22 | 0d |  |  | 16h |
| 27 | 3.1.1 | Fix signed/unsigned comparison | 1.14d | 2013-03-18 | 2013-03-20 |  | 0d |  | Julien Moreau-Mathis | 8h |
| 28 | 3.1.2 | Fix types conversions | 1.14d | 2013-03-20 | 2013-03-21 | 27 | 0d |  | Julien Moreau-Mathis | 8h |
| 29 | 3.2 | **User-SSWE Interactions** | 1.14d | 2013-04-15 | 2013-04-18 | 5, 21 | 2d | 0d |  | 8h |
| 30 | 3.2.1 | Manage visual objects placement | 1.14d | 2013-04-15 | 2013-04-18 |  | 2d |  | Arthur Caron | 8h |
| 31 | 3.3 | **Graphics Core** | 17.29d | 2013-04-05 | 2013-05-14 |  | 0d |  |  | 80h |
| 32 | 3.3.1 | **Water Surfaces** | 2.29d | 2013-04-15 | 2013-04-22 | 9 | 11.43d |  |  | 16h |
| 33 | 3.3.1.1 | Add water surfaces | 1.14d | 2013-04-15 | 2013-04-18 |  | 11.43d | 0d | Etienne Rocipon | 8h |
| 34 | 3.3.1.2 | Edit water surfaces | 1.14d | 2013-04-18 | 2013-04-22 | 33 | 11.43d |  | Etienne Rocipon | 8h |
| 35 | 3.3.2 | **Volume Lights** | 2.29d | 2013-04-23 | 2013-04-27 | 14, 29 | 2d | 0d |  | 16h |
| 36 | 3.3.2.1 | Add volume lights | 1.14d | 2013-04-23 | 2013-04-25 |  | 2d | 0d | Arthur Caron | 8h |
| 37 | 3.3.2.2 | Edit volume lights | 1.14d | 2013-04-25 | 2013-04-27 | 36 | 2d |  | Arthur Caron | 8h |
| 38 | 3.3.3 | **Rendering Features** | 17.29d | 2013-04-05 | 2013-05-14 | 15 | 0d |  |  | 32h |
| 39 | 3.3.3.1 | Create custom materials by using vertex and pixel shaders | 5d | 2013-04-05 | 2013-04-19 |  | 0d |  | Julien Moreau-Mathis | 8h |
| 40 | 3.3.3.2 | Edit nodes animations | 1.14d | 2013-04-19 | 2013-04-22 | 39 | 0d |  | Julien Moreau-Mathis | 8h |
| 41 | 3.3.3.3 | Optimize shadow maps calculation | 1.14d | 2013-04-22 | 2013-04-23 | 40 | 0d |  | Julien Moreau-Mathis | 8h |
| 42 | 3.3.3.4 | Add advanced nodes material editor | 10d | 2013-04-24 | 2013-05-14 | 41 | 0d |  | Julien Moreau-Mathis | 8h |
| 43 | 3.3.4 | **Animators** | 4d | 2013-05-03 | 2013-05-07 | 18 | 2d |  |  | 16h |
| 44 | 3.3.4.1 | Create animators collection view | 2d | 2013-05-03 | 2013-05-04 |  | 2d | 0d | Arthur Caron | 8h |
| 45 | 3.3.4.2 | Edit nodes animators by deleting, adding and editing | 2d | 2013-05-06 | 2013-05-07 | 44 | 2d |  | Arthur Caron | 8h |
| 46 | 4 | **Testing** | 4.29d | 2013-05-15 | 2013-05-23 | 25 | 0d |  |  | 24h |
| 47 | 4.1 | Set up unit tests in VS2012 | 2d | 2013-05-15 | 2013-05-16 |  | 0d |  | Julien Moreau-Mathis | 8h |
| 48 | 4.2 | Test SSWECore | 1.14d | 2013-05-21 | 2013-05-22 | 47 | 0d |  | Julien Moreau-Mathis | 8h |
| 49 | 4.3 | Test SSWERenders | 1.14d | 2013-05-22 | 2013-05-23 | 48 | 0d |  | Julien Moreau-Mathis | 8h |
